How a schedule from MS Project changed from version to version. A marks actual dates.

## Version 1 (data date 2014-06-03, saved 2014-06-03)

Note of the change: Add root elements and light detailed tasks in MS Project.

| ID | WBS | Task | Duration | Start | Finish | Predecessors | Complete | Total float |
| --- | --- | --- | --- | --- | --- | --- | --- | --- |
| 1 |  | Start of development | 0d | 2014-06-03 A | 2014-06-03 A |  | 100% |  |
| 2 |  | Discussion about work plan | 3.08d | 2014-06-03 | 2014-06-06 | 1 |  | 49.54d |
| 3 | 3 | **Prototypes** | 28d? | 2014-06-03 | 2014-07-06 | 1 |  | 0d |
| 4 | 3.1 | **HTML5 display prototypes** | 6d | 2014-06-03 | 2014-06-10 |  |  | 0d |
| 5 | 3.1.1 | **Prototype: application with included WebChromeClient** | 2d | 2014-06-03 | 2014-06-05 |  |  | 0d |
| 6 |  | research about all implementations | 0.5d | 2014-06-03 | 2014-06-03 |  |  | 0d |
| 7 |  | test different html5 renderers | 1d | 2014-06-03 | 2014-06-04 | 6 |  | 0d |
| 8 |  | check chromium renderer | 0.5d | 2014-06-04 | 2014-06-05 | 7 |  | 0d |
| 9 | 3.1.2 | **Prototype: implement all needed transitions** | 4d | 2014-06-05 | 2014-06-10 | 5 |  | 0d |
| 10 |  | research about implemented transition effects | 0.5d | 2014-06-05 | 2014-06-05 |  |  | 0d |
| 11 |  | implement mask fade effects | 1.5d | 2014-06-05 | 2014-06-08 | 10 |  | 0d |
| 12 |  | implement 3d transitions | 1d | 2014-06-08 | 2014-06-09 | 11 |  | 0d |
| 13 |  | implement object-animations | 0.5d | 2014-06-09 | 2014-06-09 | 12 |  | 0d |
| 14 |  | testing performance | 0.5d | 2014-06-09 | 2014-06-10 | 13 |  | 0d |
| 15 |  | Ready HTML5 display prototypes | 0d | 2014-06-10 | 2014-06-10 | 4 |  | 0d |
| 16 | 3.3 | **Transfeding and building presentations prototypes** | 16d? | 2014-06-10 | 2014-06-29 | 15 |  | 0d |
| 17 |  | Prototype: schedule | 4d | 2014-06-10 | 2014-06-15 |  |  | 0d |
| 18 |  | analyse logic of DevExpress schedule | 1d? | 2014-06-10 | 2014-06-11 |  |  |  |
| 19 |  | create scheme of json schedule | 1d? | 2014-06-10 | 2014-06-11 |  |  |  |
| 20 |  | try to process manually | 1d? | 2014-06-10 | 2014-06-11 |  |  |  |
| 21 | 3.3.5 | **Prototype: building html+js from json-presentations** | 4d | 2014-06-15 | 2014-06-19 | 17 |  | 0d |
| 22 |  | creating json description of presentation strcture | 1d | 2014-06-15 | 2014-06-16 |  |  | 0d |
| 23 |  | implement module logic of scene and transition (switching) | 1.5d | 2014-06-16 | 2014-06-17 | 22 |  | 0d |
| 24 |  | generating html5 code by json | 1d | 2014-06-17 | 2014-06-18 | 23 |  | 0d |
| 25 |  | testing | 0.5d | 2014-06-18 | 2014-06-19 | 24 |  | 0d |
| 26 | 3.3.6 | **Prototype: json-server** | 4d | 2014-06-19 | 2014-06-24 | 21 |  | 0d |
| 27 |  | research and experiments with exists implementations JSON-services on C# | 1.5d | 2014-06-19 | 2014-06-21 |  |  | 0d |
| 28 |  | implement test service API | 0.5d | 2014-06-21 | 2014-06-22 | 27 |  | 0d |
| 29 |  | implement test logic for transter data to client | 1d | 2014-06-22 | 2014-06-23 | 28 |  | 0d |
| 30 |  | testing work with client | 1d | 2014-06-23 | 2014-06-24 | 29 |  | 0d |
| 31 |  | Prototype: async calling network work with sesrver | 4d | 2014-06-24 | 2014-06-29 | 26 |  | 0d |
| 32 |  | Ready transfeding and building presentations prototypes | 0d | 2014-06-29 | 2014-06-29 | 16 |  | 0d |
| 33 | 3.5 | **Local managment content prototypes** | 6d | 2014-06-29 | 2014-07-06 | 32 |  | 0d |
| 34 |  | Prototype: work with local storage | 2d | 2014-06-29 | 2014-07-01 |  |  | 0d |
| 35 |  | Prototype: unloading unneded scenes (optimize reosurces) | 3d | 2014-07-01 | 2014-07-05 | 34 |  | 0d |
| 36 | 3.5.3 | **Prototype: screenshoting** | 1d | 2014-07-05 | 2014-07-06 | 35 |  | 0d |
| 37 |  | research and experiments | 0.75d | 2014-07-05 | 2014-07-05 |  |  | 0d |
| 38 |  | testing performance | 0.25d | 2014-07-05 | 2014-07-06 | 37 |  | 0d |
| 39 |  | Ready all prototypes | 0d | 2014-07-06 | 2014-07-06 | 3 |  | 0d |
| 40 | 5 | **Pre-alpha version** | 12d | 2014-07-06 | 2014-07-20 | 39 |  | 0d |
| 41 |  | Implement converting XAML-presentations to primitive format | 8d | 2014-07-06 | 2014-07-15 |  |  | 0d |
| 42 |  | Offline player alpha without animations | 4d | 2014-07-15 | 2014-07-20 | 41 |  | 0d |
| 43 |  | Ready pre-alpha version | 0d | 2014-07-20 | 2014-07-20 | 40 |  | 0d |
| 44 | 7 | **Alpha version** | 6d | 2014-07-20 | 2014-07-27 | 43 |  | 0d |
| 45 |  | Implement HTTP-JSON player-server connetction, transfering content | 3d | 2014-07-20 | 2014-07-23 |  |  | 0d |
| 46 |  | Saving content to local storage | 1.5d | 2014-07-23 | 2014-07-24 | 45 |  | 0d |
| 47 |  | Check transferring huge video, managment of downloaded content | 1.5d | 2014-07-24 | 2014-07-27 | 46 |  | 0d |
| 48 |  | Ready alpha version | 0d | 2014-07-27 | 2014-07-27 | 44 |  | 0d |
| 49 | 9 | **Developing beta-version** | 6d | 2014-07-27 | 2014-08-03 | 48 |  | 0d |
| 50 |  | Transfering information about type of player | 1d | 2014-07-27 | 2014-07-28 |  |  | 0d |
| 51 |  | Change client's GUI for prevent transferring unsupported content | 2d | 2014-07-28 | 2014-07-30 | 50 |  | 0d |
| 52 |  | Other small logic and bug-fixing | 3d | 2014-07-30 | 2014-08-03 | 51 |  | 0d |
| 53 |  | Testing and creating bug-reports | 3d | 2014-07-30 | 2014-08-03 | 51 |  | 0d |
| 54 |  | Ready beta version | 0d | 2014-08-03 | 2014-08-03 | 49 |  | 0d |
| 55 | 11 | **Release version** | 6d | 2014-08-03 | 2014-08-10 | 54 |  | 0d |
| 56 |  | Testing and bug-fixing | 6d | 2014-08-03 | 2014-08-10 |  |  | 0d |
| 57 |  | Testing and creating bug-reports | 4d | 2014-08-03 | 2014-08-07 |  |  | 2d |
| 58 |  | Ready release version | 0d | 2014-08-10 | 2014-08-10 | 55 |  | 0d |

## Version 2 (data date 2014-06-03, saved 2014-06-10)

Note of the change: Add schedule prototype describe.

Last finish 2014-08-10 → 2014-08-13 (+3d).

Added:

| ID | Task | Duration | Start | Finish | Predecessors |
| --- | --- | --- | --- | --- | --- |
| 20 | test client for check implemented logic, testing | 1d | 2014-06-18 | 2014-06-18 | 19 |
| 21 | Ready schedule converting and processing prototype | 0d | 2014-06-18 | 2014-06-18 | 16 |

Changed:

| ID | Task | Start | Finish | Duration | Total float | Predecessors | Other |
| --- | --- | --- | --- | --- | --- | --- | --- |
| 1 | Discussion about work plan | 2014-06-03 → 2014-06-10 (+7d) | 2014-06-06 → 2014-06-11 (+5d) | 3.08d → 2d | 49.54d → 54d | 2 → none | constraint none → start no earlier than 2014-06-10 |
| 2 | Start of development | 2014-06-03 A → 2014-06-05 A (+2d) | 2014-06-03 A → 2014-06-05 A (+2d) |  |  |  |  |
| 3 | **Prototypes** | 2014-06-03 → 2014-06-06 (+3d) | 2014-07-06 → 2014-07-09 (+3d) | 28d? → 30d |  |  |  |
| 4 | **HTML5 display prototypes** | 2014-06-03 → 2014-06-06 (+3d) | 2014-06-10 → 2014-06-11 (+1d) |  |  |  |  |
| 5 | **Prototype: application with included WebChromeClient** | 2014-06-03 → 2014-06-06 (+3d) | 2014-06-05 → 2014-06-07 (+2d) |  |  |  |  |
| 6 | research about all implementations | 2014-06-03 → 2014-06-06 (+3d) | 2014-06-03 → 2014-06-06 (+3d) |  |  |  |  |
| 7 | test different html5 renderers | 2014-06-03 → 2014-06-06 (+3d) | 2014-06-04 → 2014-06-07 (+3d) |  |  |  |  |
| 8 | check chromium renderer | 2014-06-04 → 2014-06-07 (+3d) | 2014-06-05 → 2014-06-07 (+2d) |  |  |  |  |
| 9 | **Prototype: implement all needed transitions** | 2014-06-05 → 2014-06-08 (+3d) | 2014-06-10 → 2014-06-11 (+1d) |  |  |  |  |
| 10 | research about implemented transition effects | 2014-06-05 → 2014-06-08 (+3d) | 2014-06-05 → 2014-06-08 (+3d) |  |  |  |  |
| 11 | implement mask fade effects | 2014-06-05 → 2014-06-08 (+3d) | 2014-06-08 → 2014-06-09 (+1d) |  |  |  |  |
| 12 | implement 3d transitions | 2014-06-08 → 2014-06-10 (+2d) | 2014-06-09 → 2014-06-10 (+1d) |  |  |  |  |
| 13 | implement object-animations | 2014-06-09 → 2014-06-11 (+2d) | 2014-06-09 → 2014-06-11 (+2d) |  |  |  |  |
| 14 | testing performance | 2014-06-09 → 2014-06-11 (+2d) | 2014-06-10 → 2014-06-11 (+1d) |  |  |  |  |
| 15 | Ready HTML5 display prototypes | 2014-06-10 → 2014-06-11 (+1d) | 2014-06-10 → 2014-06-11 (+1d) |  |  |  |  |
| 16 | **Schedule converting and processing prototype** | 2014-06-10 → 2014-06-13 (+3d) | 2014-06-15 → 2014-06-18 (+3d) | 4d → 6d |  | none → 15 | was named Prototype: schedule |
| 17 | analyse logic of DevExpress schedule | 2014-06-10 → 2014-06-13 (+3d) | 2014-06-11 → 2014-06-13 (+2d) | 1d? → 1d | none → 0d |  |  |
| 18 | create scheme of json schedule | 2014-06-10 → 2014-06-14 (+4d) | 2014-06-11 → 2014-06-15 (+4d) | 1d? → 2d | none → 0d | none → 17 |  |
| 19 | try to process manually | 2014-06-10 → 2014-06-16 (+6d) | 2014-06-11 → 2014-06-17 (+6d) | 1d? → 2d | none → 0d | none → 18 |  |
| 22 | **Transfeding and building presentations prototypes** | 2014-06-10 → 2014-06-20 (+10d) | 2014-06-29 → 2014-07-02 (+3d) | 16d? → 12d |  | 15 → 21 |  |
| 23 | **Prototype: building html+js from json-presentations** | 2014-06-15 → 2014-06-20 (+5d) | 2014-06-19 → 2014-06-23 (+4d) |  |  | 16 → none |  |
| 24 | creating json description of presentation strcture | 2014-06-15 → 2014-06-20 (+5d) | 2014-06-16 → 2014-06-20 (+4d) |  |  |  |  |
| 25 | implement module logic of scene and transition (switching) | 2014-06-16 → 2014-06-21 (+5d) | 2014-06-17 → 2014-06-22 (+5d) |  |  |  |  |
| 26 | generating html5 code by json | 2014-06-17 → 2014-06-22 (+5d) | 2014-06-18 → 2014-06-23 (+5d) |  |  |  |  |
| 27 | testing | 2014-06-18 → 2014-06-23 (+5d) | 2014-06-19 → 2014-06-23 (+4d) |  |  |  |  |
| 28 | **Prototype: json-server** | 2014-06-19 → 2014-06-24 (+5d) | 2014-06-24 → 2014-06-28 (+4d) |  |  |  |  |
| 29 | research and experiments with exists implementations JSON-services on C# | 2014-06-19 → 2014-06-24 (+5d) | 2014-06-21 → 2014-06-25 (+4d) |  |  |  |  |
| 30 | implement test service API | 2014-06-21 → 2014-06-25 (+4d) | 2014-06-22 → 2014-06-25 (+3d) |  |  |  |  |
| 31 | implement test logic for transter data to client | 2014-06-22 → 2014-06-27 (+5d) | 2014-06-23 → 2014-06-27 (+4d) |  |  |  |  |
| 32 | testing work with client | 2014-06-23 → 2014-06-28 (+5d) | 2014-06-24 → 2014-06-28 (+4d) |  |  |  |  |
| 33 | Prototype: async calling network work with sesrver | 2014-06-24 → 2014-06-29 (+5d) | 2014-06-29 → 2014-07-02 (+3d) |  |  |  |  |
| 34 | Ready transfeding and building presentations prototypes | 2014-06-29 → 2014-07-02 (+3d) | 2014-06-29 → 2014-07-02 (+3d) |  |  |  |  |
| 35 | **Local managment content prototypes** | 2014-06-29 → 2014-07-04 (+5d) | 2014-07-06 → 2014-07-09 (+3d) |  |  |  |  |
| 36 | Prototype: work with local storage | 2014-06-29 → 2014-07-04 (+5d) | 2014-07-01 → 2014-07-05 (+4d) |  |  |  |  |
| 37 | Prototype: unloading unneded scenes (optimize reosurces) | 2014-07-01 → 2014-07-06 (+5d) | 2014-07-05 → 2014-07-08 (+3d) |  |  |  |  |
| 38 | **Prototype: screenshoting** | 2014-07-05 → 2014-07-09 (+4d) | 2014-07-06 → 2014-07-09 (+3d) |  |  |  |  |
| 39 | research and experiments | 2014-07-05 → 2014-07-09 (+4d) | 2014-07-05 → 2014-07-09 (+4d) |  |  |  |  |
| 40 | testing performance | 2014-07-05 → 2014-07-09 (+4d) | 2014-07-06 → 2014-07-09 (+3d) |  |  |  |  |
| 41 | Ready all prototypes | 2014-07-06 → 2014-07-09 (+3d) | 2014-07-06 → 2014-07-09 (+3d) |  |  |  |  |
| 42 | **Pre-alpha version** | 2014-07-06 → 2014-07-11 (+5d) | 2014-07-20 → 2014-07-23 (+3d) |  |  |  |  |
| 43 | Implement converting XAML-presentations to primitive format | 2014-07-06 → 2014-07-11 (+5d) | 2014-07-15 → 2014-07-19 (+4d) |  |  |  |  |
| 44 | Offline player alpha without animations | 2014-07-15 → 2014-07-20 (+5d) | 2014-07-20 → 2014-07-23 (+3d) |  |  |  |  |
| 45 | Ready pre-alpha version | 2014-07-20 → 2014-07-23 (+3d) | 2014-07-20 → 2014-07-23 (+3d) |  |  |  |  |
| 46 | **Alpha version** | 2014-07-20 → 2014-07-25 (+5d) | 2014-07-27 → 2014-07-30 (+3d) |  |  |  |  |
| 47 | Implement HTTP-JSON player-server connetction, transfering content | 2014-07-20 → 2014-07-25 (+5d) | 2014-07-23 → 2014-07-27 (+4d) |  |  |  |  |
| 48 | Saving content to local storage | 2014-07-23 → 2014-07-28 (+5d) | 2014-07-24 → 2014-07-29 (+5d) |  |  |  |  |
| 49 | Check transferring huge video, managment of downloaded content | 2014-07-24 → 2014-07-29 (+5d) | 2014-07-27 → 2014-07-30 (+3d) |  |  |  |  |
| 50 | Ready alpha version | 2014-07-27 → 2014-07-30 (+3d) | 2014-07-27 → 2014-07-30 (+3d) |  |  |  |  |
| 51 | **Developing beta-version** | 2014-07-27 → 2014-08-01 (+5d) | 2014-08-03 → 2014-08-06 (+3d) |  |  |  |  |
| 52 | Transfering information about type of player | 2014-07-27 → 2014-08-01 (+5d) | 2014-07-28 → 2014-08-01 (+4d) |  |  |  |  |
| 53 | Change client's GUI for prevent transferring unsupported content | 2014-07-28 → 2014-08-02 (+5d) | 2014-07-30 → 2014-08-03 (+4d) |  |  |  |  |
| 54 | Other small logic and bug-fixing | 2014-07-30 → 2014-08-04 (+5d) | 2014-08-03 → 2014-08-06 (+3d) |  |  |  |  |
| 55 | Testing and creating bug-reports | 2014-07-30 → 2014-08-04 (+5d) | 2014-08-03 → 2014-08-06 (+3d) |  |  |  |  |
| 56 | Ready beta version | 2014-08-03 → 2014-08-06 (+3d) | 2014-08-03 → 2014-08-06 (+3d) |  |  |  |  |
| 57 | **Release version** | 2014-08-03 → 2014-08-08 (+5d) | 2014-08-10 → 2014-08-13 (+3d) |  |  |  |  |
| 58 | Testing and bug-fixing | 2014-08-03 → 2014-08-08 (+5d) | 2014-08-10 → 2014-08-13 (+3d) |  |  |  |  |
| 59 | Testing and creating bug-reports | 2014-08-03 → 2014-08-08 (+5d) | 2014-08-07 → 2014-08-11 (+4d) |  |  |  |  |
| 60 | Ready release version | 2014-08-10 → 2014-08-13 (+3d) | 2014-08-10 → 2014-08-13 (+3d) |  |  |  |  |

## Version 3 (data date 2014-06-03, saved 2014-06-10)

Note of the change: First publish version of development plan.

Last finish stays 2014-08-13.

Added:

| ID | Task | Duration | Start | Finish | Predecessors |
| --- | --- | --- | --- | --- | --- |
| 34 | research of all async call implementations | 1d | 2014-06-29 | 2014-06-29 |  |
| 35 | implement separated threads for different tasks with forse call | 2d | 2014-06-30 | 2014-07-01 | 34 |
| 36 | test client of work with simply json-server | 1d | 2014-07-02 | 2014-07-02 | 35 |
| 40 | research about file and SQL requests to file storage | 1d | 2014-07-04 | 2014-07-04 |  |
| 41 | implament saving huge files, preformance tests | 1d | 2014-07-05 | 2014-07-05 | 40 |
| 43 | research about max allowed content loading on page | 1d | 2014-07-06 | 2014-07-06 |  |
| 44 | prototypes and implementations for loading and unloading content | 1.5d | 2014-07-07 | 2014-07-08 | 43 |
| 45 | util for determinate memory usage, testing | 0.5d | 2014-07-08 | 2014-07-08 | 44 |

Changed:

| ID | Task | Finish | Duration | Total float |
| --- | --- | --- | --- | --- |
| 1 | Discussion about work plan | 2014-06-11 → 2014-06-13 (+2d) | 2d → 3d | 54d → 50.46d |
